# HRG - 04

Schedule from MS Project, 2025-10-20 to 2027-01-21, status date 2026-09-09, costs in €, A marks actual dates.

## Calendars

- Padrão: Mon-Fri 08:00-12:00, 13:00-17:00; Sat-Sun off. Exceptions (off unless hours are given): 2025-12-22 to 2025-12-31 (F´rias de fim de ano), 2026-08-17 to 2026-08-28 (Férias de verão), 2026-12-23 to 2026-12-31 (Férias de fim de ano).

## Resources

| Resource |
| --- |
| Etapas sem Barreiras |
| Nortezende |
| 3D METAL |
| 3DBUIL |
| A. GONÇALVES - INSTAL. E REPARAÇÕES ELÉTRICAS; LDA |
| A.A.GOMES |
| ABEL LOURENÇO DINIS; LDA |
| ACESSWAY |
| ADEXSI PORTUGAL |
| AGARRÓMUNDO |
| AGMOL CONSTRUÇÕES |
| ALBECAR |
| ALUMIVALE |
| ALVORADA TRANQUILA |
| ANDAIMES DA TORRE |
| ANIVERSARIOLÁXIA |
| ARESTALFER |
| ARMARO - PORTAS E AUTOMATISMOS |
| AROUPISOS |
| ARTYPAV |
| ASSA ABLOY |
| BAMER |
| CARLA VASCONCELOS |
| CENTRAL SERRALHARIA |
| CENTRO DE JARDINAGEM DE VAGOS |
| CIP COFRAGEM; S.A. |
| CISNEIROS |
| COFRAWAY |
| COMATRONI |
| COMVIDRO |
| CONSTRUÇÕES J. COUTO |
| CONSTRUTEC |
| CORES ABSTRATAS |
| DECIBOLT |
| DECOREVESTIMENTOS - CAPOTO |
| DERICHEBOURG FACILITY SERVICES |
| DETALHE BONDOSO |
| DFSD'AVAC |
| DFSTECAVAC |
| DITECENTRO |
| DORIEL |
| DST |
| DTE; INSTALAÇÕES ESPECIAIS |
| DUARTE CARREIRA |
| DUARTE E VIEIRA |
| DUPLA DE RESPEITO |
| DVM GLOBAL |
| EDIRAMA |
| ELITECOFRA |
| EMANUEL MAIA & SOUSA; LDA (METALOINOX) |
| ENTREFERROS |
| ESA - EMPRESA SERRALHARIA ANGEJA |
| ESTEMPERA |
| ETAPAS SEM BARREIRAS - |
| EXPOENTE SOFISTICADO |
| FECHA COUTINHO CONSTRUÇÕES |
| FERLIMPA 2 |
| FERRINHO |
| FORTCLIMA |
| FORTIVANTAGEM |
| FUNCIONAL; LDA. |
| G.S.G. |
| GASTROTEK |
| GEOM |
| GEOMA |
| GLOBAL DIS |
| GONDOTEC |
| GRUPNOR |
| HELENOS; S.A. |
| HEMER |
| HORÁCIO |
| HORTOFLORCACIA |
| HT SOLUTIONS |
| IBFLOCK |
| IBMA |
| IMENSAS OPÇÕES |
| INDUPORTA |
| INFINITECH |
| INFRAPLUS |
| INOVAENERGIA |
| ISOTEXSA |
| J. & J. TEIXEIRA |
| J. CRUZ E IRMÃOS |
| J.J. RIBEIRO |
| JSA REVESTIMENTOS |
| JUMAQ |
| KORISANA |
| LETRATEC |
| LGE - INSTALAÇÕES ELÉCTRICAS |
| LUÍS JORGE MOTA DA CUNHA; UNIPESSOAL |
| M.J.M.V. & FERREIRA |
| MAFRIMÁQUINAS |
| MAGNICOFRA |
| MAIA ENERGIA |
| MAQUIBUSTOS |
| MARCENARIA GONÇALVES |
| MESTRE ANDAIMES |
| METALONGO |
| MGLR |
| MOTA-ENGIL |
| MYKHAYLO |
| N. F. PEGADO |
| NAGARINE |
| NB KLIMA |
| NK METAL |
| OLICOF - CONSTRUÇÕES; LDA |
| PAVILITORAL |
| PEDRAS INFLUENTES |
| PEIXOTO & BATISTA |
| PENELATERRAPLANAGENS |
| PERFICHAPA |
| PÉROLA |
| PICHELARIA FERREIRA |
| PINTAVIL |
| PINTURAS VÍTOR PISCO; LDA |
| PLAN4PROJECT |
| PORTA 10 |
| PRINCEPELINO |
| PWPLADUR |
| QUAL |
| REDLEH |
| REGROUT |
| RENINSTAL - AVAC |
| RENINSTAL - ELÉTRICA |
| RENINSTAL - HIDRÁULICA |
| RESOPRE |
| REVESTLAR |
| REVILAF - CAPOTO |
| REVILAF - CARTONADO |
| REVILAF - REBOCO |
| RIBEIRO & ROCHA |
| RAG - RICARDO ALEXANDRE GONÇALVES |
| RUI MANUEL TAVARES DE BRITO SANTOS |
| RUSTIC CAPACITY |
| SAFINA |
| SCHINDLER |
| SCHMITT - ELEVADORES; LDA |
| SERC |
| SISTEL |
| SOL COM VIDA |
| SORRISOS E APLAUSOS |
| STATUS EXPERIENCE |
| STEEL POWER |
| SUBLIME E COLOSSAL |
| SYSTEMA VERTICAL |
| TACOPARQUET |
| TANGENTE LOUVÁVEL |
| TATICA & RIGOR |
| TECHFAST |
| TECNIQUITEL |
| TERMIPOL |
| TERRAÇOS ESPELHADOS |
| TORNO D'ALMA |
| TOTALREV |
| TRIA |
| TUBISOL |
| VAGOPLANO |
| VERDASCA & VERDASCA |
| VIAPLANTA |
| WASI |
| ZINCO GEOMÉTRICO |
| PLACOARTE |
| VITOR COELHO |
| 161 EW |
| JONICO |
| KINGSPAN |

## Schedule

| ID | WBS | Task | Duration | Start | Finish | Predecessors | Complete | Remaining | Baseline start | Baseline finish | Baseline duration | Total slack | Constraint | Resources | Work | Actual work | Cost | Baseline cost | Actual cost |
| --- | --- | --- | --- | --- | --- | --- | --- | --- | --- | --- | --- | --- | --- | --- | --- | --- | --- | --- | --- |
| 1 | 1 | **ESTALEIRO** | 295d | 2025-10-20 A | 2027-01-08 |  | 73% | 80d | 2025-10-20 | 2026-08-05 | 200d | 9d |  |  |  |  | 76,339.71 | 76,339.71 | 55,727.99 |
| 2 | 1.1 | Estaleiro obra | 295d | 2025-10-20 A | 2027-01-08 |  | 73% | 80d | 2025-10-20 | 2026-08-05 | 200d | 9d |  |  |  |  | 76,339.71 | 76,339.71 | 55,727.99 |
| 3 | 2 | **ESTABILIDADE** | 177d | 2025-10-20 A | 2026-07-03 |  | 99% | 0d | 2025-10-20 | 2026-03-05 | 91d | 0d |  |  | 1408h | 352h | 366,719.03 | 366,719.03 | 363,251.84 |
| 4 | 2.1 | Levantamento topográfico | 1d | 2025-10-20 A | 2025-10-20 A |  | 100% |  | 2025-10-20 | 2025-10-20 | 1d |  |  |  |  |  |  |  |  |
| 5 | 2.2 | Movimento de terras | 14d | 2025-10-21 A | 2025-11-07 A | 4 | 100% |  | 2025-10-21 | 2025-11-07 | 14d |  |  | ALVORADA TRANQUILA | 112h | 112h | 20,000 | 20,000 | 20,000 |
| 6 | 2.3 | **ESTRUTURA E FUNDAÇÃO** | 162d | 2025-11-10 A | 2026-07-03 |  | 99% | 0d | 2025-11-10 | 2026-03-05 | 76d | 0d |  |  | 1296h | 240h | 346,719.03 | 346,719.03 | 343,251.84 |
| 7 | 2.3.1 | **Estrutura - HRG 04** | 162d | 2025-11-10 A | 2026-07-03 |  | 99% | 0d | 2025-11-10 | 2026-03-05 | 76d | 0d |  | CIP COFRAGEM; S.A. | 1296h | 240h | 346,719.03 | 346,719.03 | 343,251.84 |
| 8 | 2.3.1.1 | Piso -1 | 30d | 2025-11-10 A | 2025-12-19 A | 5 | 100% |  | 2025-11-10 | 2025-11-28 | 15d |  |  |  |  |  |  |  |  |
| 9 | 2.3.1.2 | Piso 1 | 44d | 2026-03-02 A | 2026-04-30 A |  | 100% |  | 2025-12-01 | 2026-01-14 | 25d |  | start no earlier than 2026-03-02 |  |  |  |  |  |  |
| 10 | 2.3.1.3 | Piso 2 | 16d | 2026-05-01 A | 2026-05-22 A | 9 | 100% |  | 2026-01-15 | 2026-01-30 | 12d |  |  |  |  |  |  |  |  |
| 11 | 2.3.1.4 | Piso 3 | 15d | 2026-05-25 A | 2026-06-12 A | 10 | 100% |  | 2026-02-02 | 2026-02-17 | 12d |  |  |  |  |  |  |  |  |
| 12 | 2.3.1.5 | Cobertura | 15d | 2026-06-15 A | 2026-07-03 A | 11 | 100% |  | 2026-02-18 | 2026-03-05 | 12d |  |  |  |  |  |  |  |  |
| 13 | 3 | **ARQUITETURA** | 124d | 2026-07-09 A | 2027-01-21 |  | 21% | 97.37d | 2026-02-25 | 2026-08-14 | 123d | 0d |  |  | 2408h | 449.89h | 650,214.64 | 650,214.63 | 135,039.68 |
| 14 | 3.1 | **Alvenarias** | 19d | 2026-07-09 A | 2026-08-04 A |  | 100% |  | 2026-02-25 | 2026-03-31 | 25d |  |  |  |  |  | 21,195.98 | 21,195.98 | 21,195.98 |
| 15 | 3.1.1 | **Alvenaria HRG 04** | 19d | 2026-07-09 A | 2026-08-04 A |  | 100% |  | 2026-02-25 | 2026-03-31 | 25d |  |  | Etapas sem Barreiras |  |  | 0.01 | 0.01 | 0.01 |
| 16 | 3.1.1.1 | Alvenaria HRG 04 Piso -1 | 2d | 2026-08-03 A | 2026-08-04 A | 20 | 100% |  | 2026-03-30 | 2026-03-31 | 2d |  |  |  |  |  |  |  |  |
| 17 | 3.1.1.2 | Alvenaria HRG 04 Piso 1 | 3d | 2026-07-09 A | 2026-07-13 A | 11FS+5d | 100% |  | 2026-02-25 | 2026-02-27 | 3d |  | start no earlier than 2026-07-09 |  |  |  |  |  |  |
| 18 | 3.1.1.3 | Alvenaria HRG 04 Piso 2 | 4d | 2026-07-14 A | 2026-07-17 A | 12FS+5d, 17 | 100% |  | 2026-03-13 | 2026-03-17 | 3d |  |  |  |  |  |  |  |  |
| 19 | 3.1.1.4 | Alvenaria HRG 04 Piso 3 | 5d | 2026-07-20 A | 2026-07-24 A | 18 | 100% |  | 2026-03-18 | 2026-03-20 | 3d |  |  |  |  |  |  |  |  |
| 20 | 3.1.1.5 | Alvenaria HRG 04 Cobertura | 5d | 2026-07-27 A | 2026-07-31 A | 12FS+10d, 19 | 100% |  | 2026-03-23 | 2026-03-27 | 5d |  |  |  |  |  |  |  |  |
| 21 | 3.2 | **Trolharia Diversa** | 11d | 2026-07-14 A | 2026-07-28 A |  | 100% |  | 2026-03-02 | 2026-03-24 | 17d |  |  |  |  |  | 14,883.33 | 14,883.33 | 14,883.33 |
| 22 | 3.2.1 | **Aplicação de soudatight** | 10d | 2026-07-14 A | 2026-07-27 A |  | 100% |  | 2026-03-02 | 2026-03-23 | 16d |  |  |  |  |  | 0.01 | 0.01 | 0.01 |
| 23 | 3.2.1.1 | **Aplicação de soudatight HRG 04** | 10d | 2026-07-14 A | 2026-07-27 A |  | 100% |  | 2026-03-02 | 2026-03-23 | 16d |  |  |  |  |  | 0.01 | 0.01 | 0.01 |
| 24 | 3.2.1.1.1 | Piso 1 | 1d | 2026-07-14 A | 2026-07-14 A | 17 | 100% |  | 2026-03-02 | 2026-03-02 | 1d |  |  |  |  |  |  |  |  |
| 25 | 3.2.1.1.2 | Piso 2 | 1d | 2026-07-20 A | 2026-07-20 A | 18 | 100% |  | 2026-03-18 | 2026-03-18 | 1d |  |  |  |  |  |  |  |  |
| 26 | 3.2.1.1.3 | Piso 3 | 1d | 2026-07-27 A | 2026-07-27 A | 19 | 100% |  | 2026-03-23 | 2026-03-23 | 1d |  |  |  |  |  |  |  |  |

| ID | WBS | Task | Duration | Start | Finish | Predecessors | Complete | Remaining | Baseline start | Baseline finish | Baseline duration | Total slack | Free slack | Resources | Work | Actual work | Cost | Baseline cost | Actual cost |
| --- | --- | --- | --- | --- | --- | --- | --- | --- | --- | --- | --- | --- | --- | --- | --- | --- | --- | --- | --- |
| 27 | 3.2.2 | **Execução de Ombreiras** | 11d | 2026-07-14 A | 2026-07-28 A |  | 100% |  | 2026-03-02 | 2026-03-24 | 17d |  |  |  |  |  | 0.01 | 0.01 | 0.01 |
| 28 | 3.2.2.1 | **Execução de Ombreiras HRG 04** | 11d | 2026-07-14 A | 2026-07-28 A |  | 100% |  | 2026-03-02 | 2026-03-24 | 17d |  |  |  |  |  | 0.01 | 0.01 | 0.01 |
| 29 | 3.2.2.1.1 | Piso 1 | 2d | 2026-07-14 A | 2026-07-15 A | 17 | 100% |  | 2026-03-02 | 2026-03-03 | 2d |  |  |  |  |  |  |  |  |
| 30 | 3.2.2.1.2 | Piso 2 | 2d | 2026-07-20 A | 2026-07-21 A | 18 | 100% |  | 2026-03-18 | 2026-03-19 | 2d |  |  |  |  |  |  |  |  |
| 31 | 3.2.2.1.3 | Piso 3 | 2d | 2026-07-27 A | 2026-07-28 A | 19 | 100% |  | 2026-03-23 | 2026-03-24 | 2d |  |  |  |  |  |  |  |  |
| 32 | 3.2.3 | **Execução de Soleiras** | 11d | 2026-07-14 A | 2026-07-28 A |  | 100% |  | 2026-03-02 | 2026-03-24 | 17d |  |  |  |  |  | 0.01 | 0.01 | 0.01 |
| 33 | 3.2.3.1 | **Execução de Soleiras HRG 04** | 11d | 2026-07-14 A | 2026-07-28 A |  | 100% |  | 2026-03-02 | 2026-03-24 | 17d |  |  |  |  |  | 0.01 | 0.01 | 0.01 |
| 34 | 3.2.3.1.1 | Piso 1 | 2d | 2026-07-14 A | 2026-07-15 A | 29SS | 100% |  | 2026-03-02 | 2026-03-03 | 2d |  |  |  |  |  |  |  |  |
| 35 | 3.2.3.1.2 | Piso 2 | 2d | 2026-07-20 A | 2026-07-21 A | 30SS | 100% |  | 2026-03-18 | 2026-03-19 | 2d |  |  |  |  |  |  |  |  |
| 36 | 3.2.3.1.3 | Piso 3 | 2d | 2026-07-27 A | 2026-07-28 A | 31SS | 100% |  | 2026-03-23 | 2026-03-24 | 2d |  |  |  |  |  |  |  |  |
| 37 | 3.3 | **Impermeabilizações e cobertura** | 44d | 2026-07-31 A | 2026-10-14 |  | 32% | 30.05d | 2026-04-09 | 2026-05-25 | 33d | 54d |  |  | 224h | 112h | 31,470.81 | 31,470.81 | 10,070.66 |
| 38 | 3.3.1 | **Impermeabilização de varandas** | 44d | 2026-07-31 A | 2026-10-14 |  | 32% | 30.05d | 2026-04-09 | 2026-05-25 | 33d | 54d |  |  | 224h | 112h | 0.03 | 0.03 | 0.01 |
| 39 | 3.3.1.1 | **Impermeabilização de varandas - HRG 04** | 28d | 2026-07-31 A | 2026-09-22 |  | 50% | 14d | 2026-04-09 | 2026-05-12 | 24d | 48d |  | REVILAF - REBOCO | 224h | 112h | 0.01 | 0.01 | 0.01 |
| 40 | 3.3.1.1.1 | Piso 1 - Varandas | 7d | 2026-08-07 A | 2026-08-31 A | 107FS+3d | 100% |  | 2026-04-13 | 2026-04-21 | 7d |  |  |  |  |  |  |  |  |
| 41 | 3.3.1.1.2 | Piso 2 - Varandas | 7d | 2026-09-09 A | 2026-09-17 | 108FS+3d | 14% | 6d | 2026-04-24 | 2026-05-04 | 7d | 43d | 0d |  |  |  |  |  |  |
| 42 | 3.3.1.1.3 | Piso 3 - Varandas | 7d | 2026-09-14 | 2026-09-22 | 109FS+3d |  |  | 2026-05-04 | 2026-05-12 | 7d | 48d | 5d |  |  |  |  |  |  |
| 43 | 3.3.1.1.4 | Cobertura | 5d | 2026-07-31 A | 2026-08-06 A | 110FS+5d | 100% |  | 2026-04-09 | 2026-04-15 | 5d |  |  |  |  |  |  |  |  |
| 44 | 3.3.1.2 | **Impermeabilização de wc's** | 15d | 2026-09-24 | 2026-10-14 |  |  |  | 2026-04-28 | 2026-05-25 | 20d | 54d |  |  |  |  | 0.01 | 0.01 |  |
| 45 | 3.3.1.2.1 | **Impermeabilização de wc's HRG 04** | 15d | 2026-09-24 | 2026-10-14 |  |  |  | 2026-04-28 | 2026-05-25 | 20d | 54d |  |  |  |  | 0.01 | 0.01 |  |
| 46 | 3.3.1.2.1.1 | Piso 1 - Wc's | 5d | 2026-09-24 | 2026-09-30 | 89 |  |  | 2026-04-28 | 2026-05-04 | 5d | 64d | 0d |  |  |  |  |  |  |
| 47 | 3.3.1.2.1.2 | Piso 2 - Wc's | 5d | 2026-10-05 | 2026-10-09 | 90 |  |  | 2026-05-11 | 2026-05-15 | 5d | 55d | 0d |  |  |  |  |  |  |
| 48 | 3.3.1.2.1.3 | Piso 3 - Wc's | 5d | 2026-10-08 | 2026-10-14 | 91 |  |  | 2026-05-19 | 2026-05-25 | 5d | 52d | 0d |  |  |  |  |  |  |
| 49 | 3.4 | **Isolamentos** | 21d | 2026-07-31 A | 2026-09-11 |  | 87% | 2.8d | 2026-04-03 | 2026-05-01 | 21d | 87d |  |  | 152h | 118.22h | 11,236.76 | 11,236.76 | 9,775.98 |
| 50 | 3.4.1 | **Aplicação de impactodan no piso** | 11d | 2026-07-31 A | 2026-08-14 A |  | 100% |  | 2026-04-03 | 2026-05-01 | 21d |  |  |  |  |  |  | 0.01 |  |
| 51 | 3.4.1.1 | **HRG 04** | 11d | 2026-07-31 A | 2026-08-14 A |  | 100% |  | 2026-04-03 | 2026-04-27 | 17d |  |  |  |  |  |  |  |  |
| 52 | 3.4.1.1.1 | Piso 1 | 2d | 2026-07-31 A | 2026-08-03 A | 102 | 100% |  | 2026-04-03 | 2026-04-06 | 2d |  |  |  |  |  |  |  |  |
| 53 | 3.4.1.1.2 | Piso 2 | 2d | 2026-08-06 A | 2026-08-07 A | 103 | 100% |  | 2026-04-16 | 2026-04-17 | 2d |  |  |  |  |  |  |  |  |
| 54 | 3.4.1.1.3 | Piso 3 | 2d | 2026-08-13 A | 2026-08-14 A | 104 | 100% |  | 2026-04-24 | 2026-04-27 | 2d |  |  |  |  |  |  |  |  |

| ID | WBS | Task | Duration | Start | Finish | Predecessors | Complete | Remaining | Baseline start | Baseline finish | Baseline duration | Total slack | Free slack | Constraint | Resources | Work | Actual work | Cost | Baseline cost | Actual cost |
| --- | --- | --- | --- | --- | --- | --- | --- | --- | --- | --- | --- | --- | --- | --- | --- | --- | --- | --- | --- | --- |
| 55 | 3.4.2 | **Projeção de lã de rocha em couretes** | 19d | 2026-08-04 A | 2026-09-11 |  | 78% | 4.22d | 2026-04-08 | 2026-05-01 | 18d | 87d |  |  |  | 152h | 118.22h | 0.01 | 0.01 | 0.01 |
| 56 | 3.4.2.1 | **Projeção de lã de rocha - HRG 04** | 19d | 2026-08-04 A | 2026-09-11 |  | 78% | 4.22d | 2026-04-08 | 2026-05-01 | 18d | 87d |  |  | ETAPAS SEM BARREIRAS - | 152h | 118.22h | 0.01 | 0.01 | 0.01 |
| 57 | 3.4.2.1.1 | Piso 1 | 3d | 2026-08-04 A | 2026-08-06 A | 107 | 100% |  | 2026-04-08 | 2026-04-10 | 3d |  |  |  |  |  |  |  |  |  |
| 58 | 3.4.2.1.2 | Piso 2 | 3d | 2026-09-04 A | 2026-09-08 A | 108 | 100% |  | 2026-04-21 | 2026-04-23 | 3d |  |  |  |  |  |  |  |  |  |
| 59 | 3.4.2.1.3 | Piso 3 | 3d | 2026-09-09 A | 2026-09-11 | 109 | 33% | 2d | 2026-04-29 | 2026-05-01 | 3d | 87d |  |  |  |  |  |  |  |  |
| 60 | 3.5 | **Serralharias** | 31d | 2026-09-11 | 2026-10-23 |  |  |  | 2026-04-06 | 2026-06-09 | 47d | 57d |  |  |  | 248h |  | 50,861.13 | 50,861.13 |  |
| 61 | 3.5.1 | **Serralharias - HRG 04** | 31d | 2026-09-11 | 2026-10-23 |  |  |  | 2026-05-04 | 2026-06-09 | 27d | 43d |  |  | FORTIVANTAGEM | 248h |  | 0.01 | 0.01 |  |
| 62 | 3.5.1.1 | Piso 1 | 10d | 2026-09-11 | 2026-09-24 | 132 |  |  | 2026-05-04 | 2026-05-15 | 10d | 64d | 0d |  |  |  |  |  |  |  |
| 63 | 3.5.1.2 | Piso 2 | 10d | 2026-09-30 | 2026-10-13 | 133 |  |  | 2026-05-15 | 2026-05-28 | 10d | 51d | 0d |  |  |  |  |  |  |  |
| 64 | 3.5.1.3 | Piso 3 | 10d | 2026-10-12 | 2026-10-23 | 134 |  |  | 2026-05-27 | 2026-06-09 | 10d | 43d | 0d |  |  |  |  |  |  |  |
| 65 | 3.5.2 | **Porta corta fogo** | 2d | 2026-09-15 | 2026-09-16 |  |  |  | 2026-04-06 | 2026-04-07 | 2d | 84d |  |  |  |  |  |  |  |  |
| 66 | 3.5.2.1 | Porta corta fogo - HRG 04 | 2d | 2026-09-15 | 2026-09-16 | 74 |  |  | 2026-04-06 | 2026-04-07 | 2d | 84d |  |  |  |  |  |  |  |  |
| 67 | 3.6 | **Vãos Exteriores** | 21d | 2026-08-10 A | 2026-09-21 |  | 67% | 7d | 2026-03-18 | 2026-04-14 | 20d | 81d |  |  |  | 168h | 26.67h | 59,308.95 | 59,308.95 | 39,737 |
| 68 | 3.6.1 | **Vãos exteriores - HRG 04** | 21d | 2026-08-10 A | 2026-09-21 |  | 67% | 7d | 2026-03-18 | 2026-04-14 | 20d | 81d |  |  | 161 EW | 168h | 26.67h | 0.01 | 0.01 | 0.01 |
| 69 | 3.6.1.1 | Piso 1 | 5d | 2026-08-10 A | 2026-08-14 A | 34FS+10d | 100% |  | 2026-03-18 | 2026-03-24 | 5d |  |  | start no earlier than 2026-08-10 |  |  |  |  |  |  |
| 70 | 3.6.1.2 | Piso 2 | 5d | 2026-08-31 A | 2026-09-04 A | 69 | 100% |  | 2026-04-03 | 2026-04-09 | 5d |  |  |  |  |  |  |  |  |  |
| 71 | 3.6.1.3 | Piso 3 | 5d | 2026-09-15 | 2026-09-21 | 36FS+10d, 70 |  |  | 2026-04-08 | 2026-04-14 | 5d | 81d |  | start no earlier than 2026-09-15 |  |  |  |  |  |  |
| 72 | 3.7 | **Revestimento Interior de Paredes e Tetos** | 42d | 2026-09-01 A | 2026-10-28 |  | 17% | 34.83d | 2026-03-06 | 2026-06-08 | 67d | 54d |  |  |  | 368h | 109.33h | 104,329.71 | 104,329.71 | 17,736.05 |
| 73 | 3.7.1 | **Gesso Projetado e reboco** | 10d | 2026-09-01 A | 2026-09-14 |  | 70% | 3d | 2026-03-23 | 2026-04-03 | 10d | 84d |  |  |  | 80h | 56h |  |  |  |
| 74 | 3.7.1.1 | Gesso projetado em Caixa de Escada HRG 04 | 10d | 2026-09-01 A | 2026-09-14 | 19 | 70% | 3d | 2026-03-23 | 2026-04-03 | 10d | 84d | 0d | start no earlier than 2026-09-01 | REVILAF - REBOCO | 80h | 56h |  |  |  |
| 75 | 3.7.2 | **Gesso cartonado** | 30d | 2026-09-01 A | 2026-10-12 |  | 13% | 26.11d | 2026-03-06 | 2026-06-08 | 67d | 58d |  |  |  | 160h | 53.33h | 0.01 | 0.02 | 0 |
| 76 | 3.7.2.1 | **Paredes em gesso Cartonado** | 22d | 2026-09-01 A | 2026-09-30 |  | 19% | 17.72d | 2026-03-06 | 2026-05-11 | 47d | 66d |  |  |  | 160h | 53.33h | 0.01 | 0.01 | 0 |
| 77 | 3.7.2.1.1 | **Gesso Cartonado - Estrutura + 1 face** | 20d | 2026-09-01 A | 2026-09-28 |  | 33% | 13.33d | 2026-03-06 | 2026-04-08 | 24d | 68d |  |  |  | 160h | 53.33h | 0.01 | 0.01 | 0 |
| 78 | 3.7.2.1.1.1 | **Gesso cartonado - HRG 04** | 20d | 2026-09-01 A | 2026-09-28 |  | 33% | 13.33d | 2026-03-06 | 2026-04-08 | 24d | 68d |  |  | REVILAF - CARTONADO | 160h | 53.33h | 0.01 | 0.01 | 0 |
| 79 | 3.7.2.1.1.1.1 | Piso 1 | 6d | 2026-09-01 A | 2026-09-08 A | 107FS+5d | 100% |  | 2026-03-06 | 2026-03-13 | 6d |  |  | start no earlier than 2026-09-01 |  |  |  |  |  |  |
| 80 | 3.7.2.1.1.1.2 | Piso 2 | 6d | 2026-09-11 | 2026-09-18 | 108FS+5d, 79 |  |  | 2026-03-24 | 2026-03-31 | 6d | 68d | 0d |  |  |  |  |  |  |  |
| 81 | 3.7.2.1.1.1.3 | Piso 3 | 6d | 2026-09-21 | 2026-09-28 | 109FS+5d, 80 |  |  | 2026-04-01 | 2026-04-08 | 6d | 68d | 0d |  |  |  |  |  |  |  |

| ID | WBS | Task | Duration | Start | Finish | Predecessors | Complete | Remaining | Baseline start | Baseline finish | Baseline duration | Total slack | Free slack | Constraint | Resources | Work | Actual work | Cost | Baseline cost | Actual cost |
| --- | --- | --- | --- | --- | --- | --- | --- | --- | --- | --- | --- | --- | --- | --- | --- | --- | --- | --- | --- | --- |
| 82 | 3.7.2.1.2 | **Gesso Cartonado - Placagem 2ª face** | 16d | 2026-09-09 A | 2026-09-30 |  | 6% | 15.11d | 2026-04-13 | 2026-05-11 | 21d | 16d |  |  |  |  |  |  |  |  |
| 83 | 3.7.2.1.2.1 | **HRG 04** | 16d | 2026-09-09 A | 2026-09-30 |  | 6% | 15.11d | 2026-04-13 | 2026-05-11 | 21d | 16d |  |  |  |  |  |  |  |  |
| 84 | 3.7.2.1.2.1.1 | Piso 1 | 6d | 2026-09-09 A | 2026-09-16 | 252, 79 | 17% | 5d | 2026-04-13 | 2026-04-20 | 6d | 0d |  |  |  |  |  |  |  |  |
| 85 | 3.7.2.1.2.1.2 | Piso 2 | 6d | 2026-09-18 | 2026-09-25 | 253 |  |  | 2026-04-24 | 2026-05-01 | 6d | 7d | 0d |  |  |  |  |  |  |  |
| 86 | 3.7.2.1.2.1.3 | Piso 3 | 6d | 2026-09-23 | 2026-09-30 | 254 |  |  | 2026-05-04 | 2026-05-11 | 6d | 16d | 0d |  |  |  |  |  |  |  |
| 87 | 3.7.2.2 | **Gesso Cartonado em tetos - Estrutura + Placagem** | 18d | 2026-09-17 | 2026-10-12 |  |  |  | 2026-04-21 | 2026-05-21 | 23d | 0d |  |  |  |  |  |  |  |  |
| 88 | 3.7.2.2.1 | **HRG 04** | 18d | 2026-09-17 | 2026-10-12 |  |  |  | 2026-04-21 | 2026-05-21 | 23d | 0d |  |  |  |  |  |  |  |  |
| 89 | 3.7.2.2.1.1 | Piso 1 | 5d | 2026-09-17 | 2026-09-23 | 84 |  |  | 2026-04-21 | 2026-04-27 | 5d | 0d |  |  |  |  |  |  |  |  |
| 90 | 3.7.2.2.1.2 | Piso 2 | 5d | 2026-09-28 | 2026-10-02 | 85 |  |  | 2026-05-04 | 2026-05-08 | 5d | 7d | 0d |  |  |  |  |  |  |  |
| 91 | 3.7.2.2.1.3 | Piso 3 | 5d | 2026-10-01 | 2026-10-07 | 86 |  |  | 2026-05-12 | 2026-05-18 | 5d | 16d | 0d |  |  |  |  |  |  |  |
| 92 | 3.7.2.2.1.4 | Zona comuns | 3d | 2026-10-08 | 2026-10-12 | 255, 91 |  |  | 2026-05-19 | 2026-05-21 | 3d | 46d | 0d |  |  |  |  |  |  |  |
| 93 | 3.7.3 | **Cerâmicos em wc.** | 16d | 2026-10-07 | 2026-10-28 |  |  |  | 2026-05-11 | 2026-06-08 | 21d | 54d |  |  |  | 128h |  | 0.01 | 0.01 |  |
| 94 | 3.7.3.1 | **Cerâmico em wc. - HRG 04** | 16d | 2026-10-07 | 2026-10-28 |  |  |  | 2026-05-11 | 2026-06-08 | 21d | 54d |  |  | DUARTE CARREIRA | 128h |  | 0.01 | 0.01 |  |
| 95 | 3.7.3.1.1 | Piso 1 | 6d | 2026-10-07 | 2026-10-14 | 228 |  |  | 2026-05-11 | 2026-05-18 | 6d | 64d |  |  |  |  |  |  |  |  |
| 96 | 3.7.3.1.2 | Piso 2 | 6d | 2026-10-16 | 2026-10-23 | 229 |  |  | 2026-05-22 | 2026-05-29 | 6d | 57d |  |  |  |  |  |  |  |  |
| 97 | 3.7.3.1.3 | Piso 3 | 6d | 2026-10-21 | 2026-10-28 | 230 |  |  | 2026-06-01 | 2026-06-08 | 6d | 54d |  |  |  |  |  |  |  |  |
| 98 | 3.8 | **Revestimento Interior de Pavimentos** | 72d | 2026-07-22 A | 2026-11-12 |  | 26% | 53.33d | 2026-03-30 | 2026-06-16 | 57d | 43d |  |  |  | 456h | 16h | 63,105.59 | 63,105.59 | 16,407.46 |
| 99 | 3.8.1 | **Camada de enchimento** | 25d | 2026-07-22 A | 2026-09-08 |  | 99% | 0d | 2026-03-30 | 2026-04-28 | 22d | 0d |  |  |  | 200h | 16h | 0.01 | 0.01 | 0.01 |
| 100 | 3.8.1.1 | **Betspuma** | 10d | 2026-07-30 A | 2026-08-12 A |  | 100% |  | 2026-04-02 | 2026-04-23 | 16d |  |  |  |  |  |  |  |  |  |
| 101 | 3.8.1.1.1 | **HRG 04** | 10d | 2026-07-30 A | 2026-08-12 A |  | 100% |  | 2026-04-02 | 2026-04-23 | 16d |  |  |  |  |  |  |  |  |  |
| 102 | 3.8.1.1.1.1 | Piso 1 | 1d | 2026-07-30 A | 2026-07-30 A | 240, 246 | 100% |  | 2026-04-02 | 2026-04-02 | 1d |  |  |  |  |  |  |  |  |  |
| 103 | 3.8.1.1.1.2 | Piso 2 | 1d | 2026-08-05 A | 2026-08-05 A | 241, 247 | 100% |  | 2026-04-15 | 2026-04-15 | 1d |  |  |  |  |  |  |  |  |  |
| 104 | 3.8.1.1.1.3 | Piso 3 | 1d | 2026-08-12 A | 2026-08-12 A | 242, 248 | 100% |  | 2026-04-23 | 2026-04-23 | 1d |  |  |  |  |  |  |  |  |  |
| 105 | 3.8.1.2 | **Betonilha** | 25d | 2026-07-22 A | 2026-09-08 |  | 99% | 0d | 2026-03-30 | 2026-04-28 | 22d | 0d |  |  |  | 200h | 16h | 0.01 | 0.01 | 0.01 |
| 106 | 3.8.1.2.1 | **Betonilha - HRG 04** | 25d | 2026-07-22 A | 2026-09-08 |  | 99% | 0d | 2026-03-30 | 2026-04-28 | 22d | 0d |  |  | TERRAÇOS ESPELHADOS | 200h | 16h | 0.01 | 0.01 | 0.01 |
| 107 | 3.8.1.2.1.1 | Piso 1 | 3d | 2026-07-30 A | 2026-08-03 A | 246 | 100% |  | 2026-04-03 | 2026-04-07 | 3d |  |  |  |  |  |  |  |  |  |
| 108 | 3.8.1.2.1.2 | Piso 2 | 3d | 2026-09-01 A | 2026-09-03 A | 247 | 100% |  | 2026-04-16 | 2026-04-20 | 3d |  |  | start no earlier than 2026-09-01 |  |  |  |  |  |  |
| 109 | 3.8.1.2.1.3 | Piso 3 | 3d | 2026-09-04 A | 2026-09-08 A | 248, 108 | 100% |  | 2026-04-24 | 2026-04-28 | 3d |  |  |  |  |  |  |  |  |  |
| 110 | 3.8.1.2.1.4 | Cobertura | 2d | 2026-07-22 A | 2026-07-23 A |  | 100% |  | 2026-03-30 | 2026-04-01 | 3d |  |  | start no earlier than 2026-07-22 |  |  |  |  |  |  |

| ID | WBS | Task | Duration | Start | Finish | Predecessors | Complete | Remaining | Baseline start | Baseline finish | Baseline duration | Total slack | Free slack | Resources | Work | Actual work | Cost | Baseline cost | Actual cost |
| --- | --- | --- | --- | --- | --- | --- | --- | --- | --- | --- | --- | --- | --- | --- | --- | --- | --- | --- | --- |
| 111 | 3.8.2 | **Revestimento final cerâmico** | 18d | 2026-10-07 | 2026-10-30 |  |  |  | 2026-05-11 | 2026-06-10 | 23d | 50d |  |  |  |  |  |  |  |
| 112 | 3.8.2.1 | **Revestimento cerâmico em casas de banho** | 18d | 2026-10-07 | 2026-10-30 |  |  |  | 2026-05-11 | 2026-06-10 | 23d | 52d |  |  |  |  |  |  |  |
| 113 | 3.8.2.1.1 | **HRG 04** | 18d | 2026-10-07 | 2026-10-30 |  |  |  | 2026-05-11 | 2026-06-10 | 23d | 52d |  |  |  |  |  |  |  |
| 114 | 3.8.2.1.1.1 | Piso 1 | 4d | 2026-10-07 | 2026-10-12 | 228 |  |  | 2026-05-11 | 2026-05-14 | 4d | 66d |  |  |  |  |  |  |  |
| 115 | 3.8.2.1.1.2 | Piso 2 | 8d | 2026-10-16 | 2026-10-27 | 229 |  |  | 2026-05-22 | 2026-06-02 | 8d | 55d |  |  |  |  |  |  |  |
| 116 | 3.8.2.1.1.3 | Piso 3 | 8d | 2026-10-21 | 2026-10-30 | 230 |  |  | 2026-06-01 | 2026-06-10 | 8d | 52d |  |  |  |  |  |  |  |
| 117 | 3.8.2.2 | **Revestimento cerâmico em zonas comuns** | 5d | 2026-10-13 | 2026-10-19 |  |  |  | 2026-05-22 | 2026-05-28 | 5d | 46d |  |  |  |  |  |  |  |
| 118 | 3.8.2.2.1 | Revest. Cerãmico - zonas comuns - HRG 04 | 5d | 2026-10-13 | 2026-10-19 | 92 |  |  | 2026-05-22 | 2026-05-28 | 5d | 46d | 0d |  |  |  |  |  |  |
| 119 | 3.8.3 | **Revestimento final flutuante** | 16d | 2026-10-22 | 2026-11-12 |  |  |  | 2026-05-26 | 2026-06-16 | 16d | 0d |  | JONICO | 256h |  | 0.01 | 0.01 |  |
| 120 | 3.8.3.1 | **Pavimento flutuante - HRG 04** | 16d | 2026-10-22 | 2026-11-12 |  |  |  | 2026-05-26 | 2026-06-16 | 16d | 0d |  | JONICO | 128h |  | 0.01 | 0.01 |  |
| 121 | 3.8.3.1.1 | Piso 1 | 3d | 2026-10-22 | 2026-10-26 | 166 |  |  | 2026-05-26 | 2026-05-28 | 3d | 0d |  |  |  |  |  |  |  |
| 122 | 3.8.3.1.2 | Piso 2 | 6d | 2026-10-29 | 2026-11-05 | 167 |  |  | 2026-06-02 | 2026-06-09 | 6d | 4d | 0d |  |  |  |  |  |  |
| 123 | 3.8.3.1.3 | Piso 3 | 6d | 2026-11-05 | 2026-11-12 | 168 |  |  | 2026-06-09 | 2026-06-16 | 6d | 11d | 0d |  |  |  |  |  |  |
| 124 | 3.9 | **Revestimento exterior pavimentos, tectos exteriores e fachadas opacas** | 53d | 2026-09-01 A | 2026-11-12 |  | 12% | 46.82d | 2026-04-22 | 2026-06-29 | 49d | 43d |  |  | 336h | 67.67h | 40,862.96 | 40,862.96 | 5,233.22 |
| 125 | 3.9.1 | **Revestimento pavimento varandas** | 26d | 2026-09-18 | 2026-10-23 |  |  |  | 2026-05-11 | 2026-06-09 | 22d | 57d |  |  |  |  | 11,286.15 | 11,286.15 |  |
| 126 | 3.9.1.1 | **Revestimento pavimento varandas HRG 04** | 26d | 2026-09-18 | 2026-10-23 |  |  |  | 2026-05-11 | 2026-06-09 | 22d | 57d |  |  |  |  |  |  |  |
| 127 | 3.9.1.1.1 | Piso 1 | 5d | 2026-09-18 | 2026-09-24 | 132FS+5d |  |  | 2026-05-11 | 2026-05-15 | 5d | 78d |  |  |  |  |  |  |  |
| 128 | 3.9.1.1.2 | Piso 2 | 5d | 2026-10-07 | 2026-10-13 | 133FS+5d |  |  | 2026-05-22 | 2026-05-28 | 5d | 65d |  |  |  |  |  |  |  |
| 129 | 3.9.1.1.3 | Piso 3 | 5d | 2026-10-19 | 2026-10-23 | 134FS+5d |  |  | 2026-06-03 | 2026-06-09 | 5d | 57d |  |  |  |  |  |  |  |
| 130 | 3.9.2 | **Revestimento fachada - Capoto** | 53d | 2026-09-01 A | 2026-11-12 |  | 19% | 42.69d | 2026-04-22 | 2026-06-29 | 49d | 43d |  |  | 232h | 67.67h | 27,543.28 | 27,543.28 | 5,233.22 |
| 131 | 3.9.2.1 | **Capoto - HRG 04 - EPS** | 29d | 2026-09-01 A | 2026-10-09 |  | 29% | 20.54d | 2026-04-22 | 2026-05-26 | 25d | 43d |  | REVILAF - CAPOTO | 232h | 67.67h | 0.01 | 0.01 | 0 |
| 132 | 3.9.2.1.1 | Piso 1 | 8d | 2026-09-01 A | 2026-09-10 | 40 | 88% | 1d | 2026-04-22 | 2026-05-01 | 8d | 64d | 0d |  |  |  |  |  |  |
| 133 | 3.9.2.1.2 | Piso 2 | 8d | 2026-09-18 | 2026-09-29 | 41 |  |  | 2026-05-05 | 2026-05-14 | 8d | 43d | 0d |  |  |  |  |  |  |
| 134 | 3.9.2.1.3 | Piso 3 | 8d | 2026-09-30 | 2026-10-09 | 42, 133 |  |  | 2026-05-15 | 2026-05-26 | 8d | 43d | 0d |  |  |  |  |  |  |

| ID | WBS | Task | Duration | Start | Finish | Predecessors | Baseline start | Baseline finish | Baseline duration | Total slack | Free slack | Resources | Work | Cost | Baseline cost |
| --- | --- | --- | --- | --- | --- | --- | --- | --- | --- | --- | --- | --- | --- | --- | --- |
| 135 | 3.9.2.2 | **HRG 04 - ACABAMENTO** | 25d | 2026-10-09 | 2026-11-12 |  | 2026-06-01 | 2026-06-29 | 21d | 43d |  |  |  |  |  |
| 136 | 3.9.2.2.1 | Piso 1 | 4d | 2026-10-09 | 2026-10-14 | 62FS+10d | 2026-06-01 | 2026-06-04 | 4d | 64d |  |  |  |  |  |
| 137 | 3.9.2.2.2 | Piso 2 | 4d | 2026-10-28 | 2026-11-02 | 63FS+10d | 2026-06-12 | 2026-06-17 | 4d | 51d |  |  |  |  |  |
| 138 | 3.9.2.2.3 | Piso 3 | 4d | 2026-11-09 | 2026-11-12 | 64FS+10d | 2026-06-24 | 2026-06-29 | 4d | 43d |  |  |  |  |  |
| 139 | 3.9.3 | **Revestimento de tetos** | 13d | 2026-10-08 | 2026-10-26 |  | 2026-05-12 | 2026-05-28 | 13d | 56d |  |  | 104h | 2,033.53 | 2,033.53 |
| 140 | 3.9.3.1 | **Tratamento de betão à vista** | 13d | 2026-10-08 | 2026-10-26 |  | 2026-05-12 | 2026-05-28 | 13d | 56d |  |  | 104h | 0.01 | 0.01 |
| 141 | 3.9.3.1.1 | **Tratamento de betão à vista HRG 04** | 13d | 2026-10-08 | 2026-10-26 |  | 2026-05-12 | 2026-05-28 | 13d | 56d |  | ABEL LOURENÇO DINIS; LDA | 104h | 0.01 | 0.01 |
| 142 | 3.9.3.1.1.1 | Piso 1 | 3d | 2026-10-08 | 2026-10-12 | 148 | 2026-05-12 | 2026-05-14 | 3d | 66d |  |  |  |  |  |
| 143 | 3.9.3.1.1.2 | Piso 2 | 3d | 2026-10-15 | 2026-10-19 | 149 | 2026-05-19 | 2026-05-21 | 3d | 61d |  |  |  |  |  |
| 144 | 3.9.3.1.1.3 | Piso 3 | 3d | 2026-10-22 | 2026-10-26 | 150 | 2026-05-26 | 2026-05-28 | 3d | 56d |  |  |  |  |  |
| 145 | 3.10 | **Pinturas** | 52d | 2026-10-01 | 2026-12-11 |  | 2026-05-05 | 2026-07-15 | 52d | 0d |  |  | 120h | 17,450.07 | 17,450.07 |
| 146 | 3.10.1 | **Pinturas - Lixamento e 1ª Demão** | 15d | 2026-10-01 | 2026-10-21 |  | 2026-05-05 | 2026-05-25 | 15d | 0d |  |  | 120h | 0.01 | 0.01 |
| 147 | 3.10.1.1 | **Pinturas - HRG 04** | 15d | 2026-10-01 | 2026-10-21 |  | 2026-05-05 | 2026-05-25 | 15d | 0d |  | ABEL LOURENÇO DINIS; LDA | 120h | 0.01 | 0.01 |
| 148 | 3.10.1.1.1 | Piso 1 | 5d | 2026-10-01 | 2026-10-07 | 89FS+5d | 2026-05-05 | 2026-05-11 | 5d | 0d |  |  |  |  |  |
| 149 | 3.10.1.1.2 | Piso 2 | 5d | 2026-10-08 | 2026-10-14 | 90, 148 | 2026-05-12 | 2026-05-18 | 5d | 4d | 0d |  |  |  |  |
| 150 | 3.10.1.1.3 | Piso 3 | 5d | 2026-10-15 | 2026-10-21 | 91, 149 | 2026-05-19 | 2026-05-25 | 5d | 11d | 0d |  |  |  |  |
| 151 | 3.10.2 | **Pinturas - 2ª demão** | 17d | 2026-11-18 | 2026-12-10 |  | 2026-06-22 | 2026-07-14 | 17d | 0d |  |  |  |  |  |
| 152 | 3.10.2.1 | **HRG 04** | 17d | 2026-11-18 | 2026-12-10 |  | 2026-06-22 | 2026-07-14 | 17d | 0d |  |  |  |  |  |
| 153 | 3.10.2.1.1 | Piso 1 | 4d | 2026-11-18 | 2026-11-23 | 171FS+5d | 2026-06-22 | 2026-06-25 | 4d | 0d |  |  |  |  |  |
| 154 | 3.10.2.1.2 | Piso 2 | 4d | 2026-11-30 | 2026-12-03 | 172FS+5d | 2026-07-02 | 2026-07-07 | 4d | 4d | 0d |  |  |  |  |
| 155 | 3.10.2.1.3 | Piso 3 | 4d | 2026-12-07 | 2026-12-10 | 173FS+5d | 2026-07-09 | 2026-07-14 | 4d | 11d | 0d |  |  |  |  |
| 156 | 3.10.3 | **Pinturas - Tetos** | 14d | 2026-11-24 | 2026-12-11 |  | 2026-06-26 | 2026-07-15 | 14d | 22d |  |  |  |  |  |
| 157 | 3.10.3.1 | **HRG 04** | 14d | 2026-11-24 | 2026-12-11 |  | 2026-06-26 | 2026-07-15 | 14d | 22d |  |  |  |  |  |
| 158 | 3.10.3.1.1 | Piso 1 | 1d | 2026-11-24 | 2026-11-24 | 153 | 2026-06-26 | 2026-06-26 | 1d | 35d |  |  |  |  |  |
| 159 | 3.10.3.1.2 | Piso 2 | 1d | 2026-12-04 | 2026-12-04 | 154 | 2026-07-08 | 2026-07-08 | 1d | 27d |  |  |  |  |  |
| 160 | 3.10.3.1.3 | Piso 3 | 1d | 2026-12-11 | 2026-12-11 | 155 | 2026-07-15 | 2026-07-15 | 1d | 22d |  |  |  |  |  |

| ID | WBS | Task | Type | Duration | Start | Finish | Predecessors | Baseline start | Baseline finish | Baseline duration | Total slack | Free slack | Resources | Work | Cost | Baseline cost |
| --- | --- | --- | --- | --- | --- | --- | --- | --- | --- | --- | --- | --- | --- | --- | --- | --- |
| 161 | 3.10.4 | **Pintura de caixas de escada** |  | 8d | 2026-10-20 | 2026-10-29 |  | 2026-05-29 | 2026-06-09 | 8d | 53d |  |  |  |  |  |
| 162 | 3.10.4.1 | Pintura de caixas de escada - HRG 04 |  | 8d | 2026-10-20 | 2026-10-29 | 118 | 2026-05-29 | 2026-06-09 | 8d | 53d |  |  |  |  |  |
| 163 | 3.11 | **Carpintarias** |  | 32d | 2026-10-15 | 2026-11-27 |  | 2026-05-19 | 2026-07-01 | 32d | 0d |  |  | 240h | 174,298.89 | 174,298.88 |
| 164 | 3.11.1 | **Carpintarias - Caixotes** |  | 15d | 2026-10-15 | 2026-11-04 |  | 2026-05-19 | 2026-06-08 | 15d | 0d |  |  | 120h | 0.01 | 0.01 |
| 165 | 3.11.1.1 | **Carpintarias - HRG 04** |  | 15d | 2026-10-15 | 2026-11-04 |  | 2026-05-19 | 2026-06-08 | 15d | 0d |  | GLOBAL DIS | 120h | 0.01 | 0.01 |
| 166 | 3.11.1.1.1 | Piso 1 |  | 5d | 2026-10-15 | 2026-10-21 | 148FS+5d | 2026-05-19 | 2026-05-25 | 5d | 0d |  |  |  |  |  |
| 167 | 3.11.1.1.2 | Piso 2 |  | 5d | 2026-10-22 | 2026-10-28 | 149FS+5d, 166 | 2026-05-26 | 2026-06-01 | 5d | 4d | 0d |  |  |  |  |
| 168 | 3.11.1.1.3 | Piso 3 |  | 5d | 2026-10-29 | 2026-11-04 | 150FS+5d, 167 | 2026-06-02 | 2026-06-08 | 5d | 11d | 0d |  |  |  |  |
| 169 | 3.11.2 | **Carpintarias Portas de armários e acabamentos** |  | 21d | 2026-10-30 | 2026-11-27 |  | 2026-06-03 | 2026-07-01 | 21d | 0d |  |  |  |  |  |
| 170 | 3.11.2.1 | **HRG 04** |  | 21d | 2026-10-30 | 2026-11-27 |  | 2026-06-03 | 2026-07-01 | 21d | 0d |  |  |  |  |  |
| 171 | 3.11.2.1.1 | Piso 1 |  | 8d | 2026-10-30 | 2026-11-10 | 121FS+3d | 2026-06-03 | 2026-06-12 | 8d | 0d |  |  |  |  |  |
| 172 | 3.11.2.1.2 | Piso 2 |  | 8d | 2026-11-11 | 2026-11-20 | 122FS+3d | 2026-06-15 | 2026-06-24 | 8d | 4d | 0d |  |  |  |  |
| 173 | 3.11.2.1.3 | Piso 3 |  | 8d | 2026-11-18 | 2026-11-27 | 123FS+3d | 2026-06-22 | 2026-07-01 | 8d | 11d | 0d |  |  |  |  |
| 174 | 3.11.3 | **Carpintarias - Zonas comuns - HRG 04** |  | 15d | 2026-10-20 | 2026-11-09 |  | 2026-05-29 | 2026-06-18 | 15d | 46d |  | GLOBAL DIS | 120h | 0.01 |  |
| 175 | 3.11.3.1 | **HRG 04** |  | 15d | 2026-10-20 | 2026-11-09 |  | 2026-05-29 | 2026-06-18 | 15d | 46d |  |  |  |  |  |
| 176 | 3.11.3.1.1 | Piso 1 |  | 5d | 2026-10-20 | 2026-10-26 | 118 | 2026-05-29 | 2026-06-04 | 5d | 46d | 0d |  |  |  |  |
| 177 | 3.11.3.1.2 | Piso 2 |  | 5d | 2026-10-27 | 2026-11-02 | 176 | 2026-06-05 | 2026-06-11 | 5d | 46d | 0d |  |  |  |  |
| 178 | 3.11.3.1.3 | Piso 3 |  | 5d | 2026-11-03 | 2026-11-09 | 177 | 2026-06-12 | 2026-06-18 | 5d | 46d |  |  |  |  |  |
| 179 | 3.11.4 | **Portas de entrada dos apartamentos** |  | 10d | 2026-11-05 | 2026-11-18 |  | 2026-06-09 | 2026-06-22 | 10d | 39d |  |  |  |  |  |
| 180 | 3.11.4.1 | Portas de entrada dos apartamentos HRG 04 |  | 10d | 2026-11-05 | 2026-11-18 | 168 | 2026-06-09 | 2026-06-22 | 10d | 39d |  |  |  |  |  |
| 181 | 3.12 | **Vidrarias - Espelho e Resguardo** | inactive | 3d | 2025-10-20 | 2025-10-22 |  |  |  |  | 301d |  |  |  | 0.01 |  |
| 182 | 3.12.1 | **Espelhos - HRG 04** | inactive | 3d | 2025-10-20 | 2025-10-22 |  |  |  |  | 301d |  |  |  | 0.01 |  |
| 183 | 3.12.1.1 | Piso 1 | inactive | 3d | 2025-10-20 | 2025-10-22 |  |  |  |  | 301d |  |  |  |  |  |
| 184 | 3.12.1.2 | Piso 2 | inactive | 3d | 2025-10-20 | 2025-10-22 |  |  |  |  | 301d |  |  |  |  |  |
| 185 | 3.12.1.3 | Piso 3 | inactive | 3d | 2025-10-20 | 2025-10-22 |  |  |  |  | 301d |  |  |  |  |  |

| ID | WBS | Task | Type | Duration | Start | Finish | Predecessors | Complete | Remaining | Baseline start | Baseline finish | Baseline duration | Total slack | Free slack | Resources | Work | Actual work | Cost | Baseline cost | Actual cost |
| --- | --- | --- | --- | --- | --- | --- | --- | --- | --- | --- | --- | --- | --- | --- | --- | --- | --- | --- | --- | --- |
| 186 | 3.13 | **Equipamento de cozinha** |  | 12d | 2026-10-22 | 2026-11-06 |  |  |  | 2026-05-26 | 2026-06-10 | 12d | 27d |  |  | 96h |  | 34,808.58 | 34,808.58 |  |
| 187 | 3.13.1 | **Tampos de cozinhas e eletrodomésticos** |  | 12d | 2026-10-22 | 2026-11-06 |  |  |  | 2026-05-26 | 2026-06-10 | 12d | 27d |  |  | 96h |  | 0.01 | 0.01 |  |
| 188 | 3.13.1.1 | **Tampos de cozinhas e eletrodomésticos - HRG 04** |  | 12d | 2026-10-22 | 2026-11-06 |  |  |  | 2026-05-26 | 2026-06-10 | 12d | 27d |  | STATUS EXPERIENCE | 96h |  | 0.01 | 0.01 |  |
| 189 | 3.13.1.1.1 | Piso 1 |  | 2d | 2026-10-22 | 2026-10-23 | 166 |  |  | 2026-05-26 | 2026-05-27 | 2d | 57d |  |  |  |  |  |  |  |
| 190 | 3.13.1.1.2 | Piso 2 |  | 2d | 2026-10-29 | 2026-10-30 | 167 |  |  | 2026-06-02 | 2026-06-03 | 2d | 52d |  |  |  |  |  |  |  |
| 191 | 3.13.1.1.3 | Piso 3 |  | 2d | 2026-11-05 | 2026-11-06 | 168 |  |  | 2026-06-09 | 2026-06-10 | 2d | 17d | 0d |  |  |  |  |  |  |
| 192 | 3.14 | **Equipamento de casa de banho** |  | 17d | 2026-11-11 | 2026-12-03 |  |  |  | 2026-06-15 | 2026-07-07 | 17d | 25d |  |  |  |  | 22,893.68 | 22,893.68 |  |
| 193 | 3.14.1 | **Equipamento de casa de banho - HRG 04** |  | 17d | 2026-11-11 | 2026-12-03 |  |  |  | 2026-06-15 | 2026-07-07 | 17d | 25d |  |  |  |  | 0.01 | 0.01 |  |
| 194 | 3.14.1.1 | Piso 1 |  | 4d | 2026-11-11 | 2026-11-16 | 171 |  |  | 2026-06-15 | 2026-06-18 | 4d | 38d | 0d |  |  |  |  |  |  |
| 195 | 3.14.1.2 | Piso 2 |  | 4d | 2026-11-23 | 2026-11-26 | 172 |  |  | 2026-06-25 | 2026-06-30 | 4d | 30d | 0d |  |  |  |  |  |  |
| 196 | 3.14.1.3 | Piso 3 |  | 4d | 2026-11-30 | 2026-12-03 | 173 |  |  | 2026-07-02 | 2026-07-07 | 4d | 25d | 0d |  |  |  |  |  |  |
| 197 | 3.15 | **Limpezas e diversos** |  | 36d | 2026-11-24 | 2027-01-21 |  |  |  | 2026-06-26 | 2026-08-14 | 36d | 0d |  |  |  |  | 3,508.2 | 3,508.2 |  |
| 198 | 3.15.1 | **Limpezas - HRG 04** |  | 36d | 2026-11-24 | 2027-01-21 |  |  |  | 2026-06-26 | 2026-08-14 | 36d | 0d |  |  |  |  | 0.01 | 0.01 |  |
| 199 | 3.15.1.1 | Piso 1 |  | 12d | 2026-11-24 | 2026-12-09 | 153 |  |  | 2026-06-26 | 2026-07-13 | 12d | 0d |  |  |  |  |  |  |  |
| 200 | 3.15.1.2 | Piso 2 |  | 12d | 2026-12-10 | 2027-01-05 | 154, 199 |  |  | 2026-07-14 | 2026-07-29 | 12d | 0d |  |  |  |  |  |  |  |
| 201 | 3.15.1.3 | Piso 3 |  | 12d | 2027-01-06 | 2027-01-21 | 155, 200 |  |  | 2026-07-30 | 2026-08-14 | 12d | 0d |  |  |  |  |  |  |  |
| 202 | 4 | **REDES, INSTALAÇÕES E EQUIPAMENTOS** |  | 109d | 2026-07-06 A | 2026-12-17 |  | 43% | 61.71d | 2026-03-06 | 2026-07-21 | 98d | 18d |  |  | 952h | 632h | 243,958.63 | 243,958.63 | 74,894.85 |
| 203 | 4.1 | **Rede de abastecimento de Gás** | inactive | 3d | 2025-10-20 | 2025-10-22 |  |  |  |  |  |  | 301d |  |  |  |  |  |  |  |
| 204 | 4.1.1 | **Lote 14 A** | inactive | 3d | 2025-10-20 | 2025-10-22 |  |  |  |  |  |  | 301d |  |  |  |  |  |  |  |
| 205 | 4.1.1.1 | Piso 1 | inactive | 3d | 2025-10-20 | 2025-10-22 |  |  |  |  |  |  | 301d |  |  |  |  |  |  |  |
| 206 | 4.1.1.2 | Piso 2 | inactive | 3d | 2025-10-20 | 2025-10-22 |  |  |  |  |  |  | 301d |  |  |  |  |  |  |  |
| 207 | 4.1.1.3 | Piso 3 | inactive | 3d | 2025-10-20 | 2025-10-22 |  |  |  |  |  |  | 301d |  |  |  |  |  |  |  |
| 208 | 4.1.2 | **Lote 14 B** | inactive | 3d | 2025-10-20 | 2025-10-22 |  |  |  |  |  |  | 301d |  |  |  |  |  |  |  |
| 209 | 4.1.2.1 | Piso 1 | inactive | 3d | 2025-10-20 | 2025-10-22 |  |  |  |  |  |  | 301d |  |  |  |  |  |  |  |
| 210 | 4.1.2.2 | Piso 2 | inactive | 3d | 2025-10-20 | 2025-10-22 |  |  |  |  |  |  | 301d |  |  |  |  |  |  |  |
| 211 | 4.1.2.3 | Piso 3 | inactive | 3d | 2025-10-20 | 2025-10-22 |  |  |  |  |  |  | 301d |  |  |  |  |  |  |  |

| ID | WBS | Task | Type | Duration | Start | Finish | Predecessors | Complete | Remaining | Baseline start | Baseline finish | Baseline duration | Total slack | Free slack | Work | Actual work | Cost | Baseline cost | Actual cost |
| --- | --- | --- | --- | --- | --- | --- | --- | --- | --- | --- | --- | --- | --- | --- | --- | --- | --- | --- | --- |
| 212 | 4.1.3 | **Lote 16** | inactive | 3d | 2025-10-20 | 2025-10-22 |  |  |  |  |  |  | 301d |  |  |  |  |  |  |
| 213 | 4.1.3.1 | Piso 1 | inactive | 3d | 2025-10-20 | 2025-10-22 |  |  |  |  |  |  | 301d |  |  |  |  |  |  |
| 214 | 4.1.3.2 | Piso 2 | inactive | 3d | 2025-10-20 | 2025-10-22 |  |  |  |  |  |  | 301d |  |  |  |  |  |  |
| 215 | 4.1.3.3 | Piso 3 | inactive | 3d | 2025-10-20 | 2025-10-22 |  |  |  |  |  |  | 301d |  |  |  |  |  |  |
| 216 | 4.2 | **Rede de abastecimento de águas, pluviais e residuais** |  | 102d | 2026-07-06 A | 2026-12-08 |  | 47% | 54.12d | 2026-03-06 | 2026-07-10 | 91d | 25d |  | 152h | 152h | 67,598.89 | 67,598.89 | 31,771.48 |
| 217 | 4.2.1 | **Rede de abastecimento de águas** |  | 102d | 2026-07-06 A | 2026-12-08 |  | 47% | 54.12d | 2026-03-06 | 2026-07-10 | 91d | 25d |  | 152h | 152h | 0.01 | 0.01 | 0.01 |
| 218 | 4.2.1.1 | **Infraestrutura em paredes** |  | 19d | 2026-09-14 | 2026-10-08 |  |  |  | 2026-03-19 | 2026-04-20 | 23d | 68d |  |  |  |  |  |  |
| 219 | 4.2.1.1.1 | Piso 1 |  | 4d | 2026-09-14 | 2026-09-17 | 79FS+3d |  |  | 2026-03-19 | 2026-03-24 | 4d | 83d |  |  |  |  |  |  |
| 220 | 4.2.1.1.2 | Piso 2 |  | 8d | 2026-09-21 | 2026-09-30 | 80 |  |  | 2026-04-01 | 2026-04-10 | 8d | 74d |  |  |  |  |  |  |
| 221 | 4.2.1.1.3 | Piso 3 |  | 8d | 2026-09-29 | 2026-10-08 | 81 |  |  | 2026-04-09 | 2026-04-20 | 8d | 68d |  |  |  |  |  |  |
| 222 | 4.2.1.2 | **Infraestrutura em tetos** |  | 24d | 2026-08-04 A | 2026-09-18 |  | 45% | 13.2d | 2026-04-08 | 2026-05-08 | 23d | 82d |  |  |  |  |  |  |
| 223 | 4.2.1.2.1 | Piso 1 |  | 4d | 2026-08-04 A | 2026-08-07 A | 107 | 100% |  | 2026-04-08 | 2026-04-13 | 4d |  |  |  |  |  |  |  |
| 224 | 4.2.1.2.2 | Piso 2 |  | 8d | 2026-09-04 A | 2026-09-15 | 108 | 50% | 4d | 2026-04-21 | 2026-04-30 | 8d | 85d |  |  |  |  |  |  |
| 225 | 4.2.1.2.3 | Piso 3 |  | 8d | 2026-09-09 A | 2026-09-18 | 109 | 13% | 7d | 2026-04-29 | 2026-05-08 | 8d | 82d |  |  |  |  |  |  |
| 226 | 4.2.1.3 | **Assentamento de bases de duche** |  | 14d | 2026-10-01 | 2026-10-20 |  |  |  | 2026-05-05 | 2026-05-29 | 19d | 54d |  |  |  |  |  |  |
| 227 | 4.2.1.3.1 | **HRG 04** |  | 14d | 2026-10-01 | 2026-10-20 |  |  |  | 2026-05-05 | 2026-05-29 | 19d | 54d |  |  |  |  |  |  |
| 228 | 4.2.1.3.1.1 | Piso 1 |  | 4d | 2026-10-01 | 2026-10-06 | 46 |  |  | 2026-05-05 | 2026-05-08 | 4d | 64d | 0d |  |  |  |  |  |
| 229 | 4.2.1.3.1.2 | Piso 2 |  | 4d | 2026-10-12 | 2026-10-15 | 47 |  |  | 2026-05-18 | 2026-05-21 | 4d | 55d | 0d |  |  |  |  |  |
| 230 | 4.2.1.3.1.3 | Piso 3 |  | 4d | 2026-10-15 | 2026-10-20 | 48 |  |  | 2026-05-26 | 2026-05-29 | 4d | 52d | 0d |  |  |  |  |  |
| 231 | 4.2.1.4 | **Montagem de louças e torneiras** |  | 16d | 2026-11-17 | 2026-12-08 |  |  |  | 2026-06-19 | 2026-07-10 | 16d | 25d |  |  |  |  |  |  |
| 232 | 4.2.1.4.1 | **HRG 04** |  | 16d | 2026-11-17 | 2026-12-08 |  |  |  | 2026-06-19 | 2026-07-10 | 16d | 25d |  |  |  |  |  |  |
| 233 | 4.2.1.4.1.1 | Piso 1 |  | 3d | 2026-11-17 | 2026-11-19 | 194 |  |  | 2026-06-19 | 2026-06-23 | 3d | 38d |  |  |  |  |  |  |
| 234 | 4.2.1.4.1.2 | Piso 2 |  | 3d | 2026-11-27 | 2026-12-01 | 195 |  |  | 2026-07-01 | 2026-07-03 | 3d | 30d |  |  |  |  |  |  |
| 235 | 4.2.1.4.1.3 | Piso 3 |  | 3d | 2026-12-04 | 2026-12-08 | 196 |  |  | 2026-07-08 | 2026-07-10 | 3d | 25d |  |  |  |  |  |  |

| ID | WBS | Task | Duration | Start | Finish | Predecessors | Complete | Remaining | Baseline start | Baseline finish | Baseline duration | Total slack | Free slack | Resources | Work | Actual work | Cost | Baseline cost | Actual cost |
| --- | --- | --- | --- | --- | --- | --- | --- | --- | --- | --- | --- | --- | --- | --- | --- | --- | --- | --- | --- |
| 236 | 4.2.1.5 | **Rede de águas pluviais** | 7d | 2026-07-06 A | 2026-07-14 A |  | 100% |  | 2026-03-06 | 2026-03-16 | 7d |  |  |  |  |  |  |  |  |
| 237 | 4.2.1.5.1 | Rede de águas pluviais HRG 04 | 7d | 2026-07-06 A | 2026-07-14 A | 12 | 100% |  | 2026-03-06 | 2026-03-16 | 7d |  |  |  |  |  |  |  |  |
| 238 | 4.2.1.6 | **Rede de águas residuais Infraestruturas** | 19d | 2026-07-16 A | 2026-08-11 A |  | 100% |  | 2026-03-19 | 2026-04-22 | 25d |  |  |  | 152h | 152h | 0.01 | 0.01 | 0.01 |
| 239 | 4.2.1.6.1 | **Hidráulicas - HRG 04** | 19d | 2026-07-16 A | 2026-08-11 A |  | 100% |  | 2026-03-19 | 2026-04-22 | 25d |  |  | RENINSTAL - HIDRÁULICA | 152h | 152h | 0.01 | 0.01 | 0.01 |
| 240 | 4.2.1.6.1.1 | Piso 1 | 10d | 2026-07-16 A | 2026-07-29 A | 29 | 100% |  | 2026-03-19 | 2026-04-01 | 10d |  |  |  |  |  |  |  |  |
| 241 | 4.2.1.6.1.2 | Piso 2 | 10d | 2026-07-22 A | 2026-08-04 A | 30 | 100% |  | 2026-04-01 | 2026-04-14 | 10d |  |  |  |  |  |  |  |  |
| 242 | 4.2.1.6.1.3 | Piso 3 | 10d | 2026-07-29 A | 2026-08-11 A | 31 | 100% |  | 2026-04-09 | 2026-04-22 | 10d |  |  |  |  |  |  |  |  |
| 243 | 4.3 | **Rede de Eletricidade e Ited** | 101d | 2026-07-16 A | 2026-12-17 |  | 49% | 51.04d | 2026-03-19 | 2026-07-21 | 89d | 18d |  |  | 152h | 152h | 74,379.97 | 74,379.97 | 36,446.19 |
| 244 | 4.3.1 | **Rede de Eletricidade e ITED - Infraestrutura piso e parede** | 101d | 2026-07-16 A | 2026-12-17 |  | 49% | 51.04d | 2026-03-19 | 2026-07-21 | 89d | 18d |  |  | 152h | 152h | 0.01 | 0.01 | 0.01 |
| 245 | 4.3.1.1 | **Eletricidade e ited - HRG 04** | 19d | 2026-07-16 A | 2026-08-11 A |  | 100% |  | 2026-03-19 | 2026-04-22 | 25d |  |  | RENINSTAL - ELÉTRICA | 152h | 152h | 0.01 | 0.01 | 0.01 |
| 246 | 4.3.1.1.1 | Piso 1 | 10d | 2026-07-16 A | 2026-07-29 A | 29 | 100% |  | 2026-03-19 | 2026-04-01 | 10d |  |  |  |  |  |  |  |  |
| 247 | 4.3.1.1.2 | Piso 2 | 10d | 2026-07-22 A | 2026-08-04 A | 30 | 100% |  | 2026-04-01 | 2026-04-14 | 10d |  |  |  |  |  |  |  |  |
| 248 | 4.3.1.1.3 | Piso 3 | 10d | 2026-07-29 A | 2026-08-11 A | 31 | 100% |  | 2026-04-09 | 2026-04-22 | 10d |  |  |  |  |  |  |  |  |
| 249 | 4.3.1.2 | **Rede de Eletricidade e ITED - Infraestrutura tetos** | 36d | 2026-08-04 A | 2026-10-06 |  | 33% | 24d | 2026-04-08 | 2026-05-26 | 35d | 70d |  |  |  |  |  |  |  |
| 250 | 4.3.1.2.1 | **HRG 04** | 36d | 2026-08-04 A | 2026-10-06 |  | 33% | 24d | 2026-04-08 | 2026-05-26 | 35d | 70d |  |  |  |  |  |  |  |
| 251 | 4.3.1.2.1.1 | Piso -1 | 10d | 2026-09-23 | 2026-10-06 | 254 |  |  | 2026-05-13 | 2026-05-26 | 10d | 70d |  |  |  |  |  |  |  |
| 252 | 4.3.1.2.1.2 | Piso 1 | 10d | 2026-08-04 A | 2026-08-31 A | 107 | 100% |  | 2026-04-08 | 2026-04-21 | 10d |  |  |  |  |  |  |  |  |
| 253 | 4.3.1.2.1.3 | Piso 2 | 10d | 2026-09-04 A | 2026-09-17 | 108 | 40% | 6d | 2026-04-21 | 2026-05-04 | 10d | 7d | 0d |  |  |  |  |  |  |
| 254 | 4.3.1.2.1.4 | Piso 3 | 10d | 2026-09-09 A | 2026-09-22 | 109 | 10% | 9d | 2026-04-29 | 2026-05-12 | 10d | 16d | 0d |  |  |  |  |  |  |
| 255 | 4.3.1.2.1.5 | Zonas comuns | 8d | 2026-09-09 A | 2026-09-18 | 109 | 13% | 7d | 2026-04-29 | 2026-05-08 | 8d | 59d | 13d |  |  |  |  |  |  |
| 256 | 4.3.1.3 | **Rede de Eletricidade e ITED - Aparelhagem e Iluminação** | 18d | 2026-11-24 | 2026-12-17 |  |  |  | 2026-06-26 | 2026-07-21 | 18d | 18d |  |  |  |  |  |  |  |
| 257 | 4.3.1.3.1 | **HRG 04** | 18d | 2026-11-24 | 2026-12-17 |  |  |  | 2026-06-26 | 2026-07-21 | 18d | 18d |  |  |  |  |  |  |  |
| 258 | 4.3.1.3.1.1 | Piso 1 | 5d | 2026-11-24 | 2026-11-30 | 153 |  |  | 2026-06-26 | 2026-07-02 | 5d | 31d |  |  |  |  |  |  |  |
| 259 | 4.3.1.3.1.2 | Piso 2 | 5d | 2026-12-04 | 2026-12-10 | 154 |  |  | 2026-07-08 | 2026-07-14 | 5d | 23d |  |  |  |  |  |  |  |
| 260 | 4.3.1.3.1.3 | Piso 3 | 5d | 2026-12-11 | 2026-12-17 | 155 |  |  | 2026-07-15 | 2026-07-21 | 5d | 18d |  |  |  |  |  |  |  |

| ID | WBS | Task | Type | Duration | Start | Finish | Predecessors | Complete | Remaining | Baseline start | Baseline finish | Baseline duration | Total slack | Resources | Work | Actual work | Cost | Baseline cost | Actual cost |
| --- | --- | --- | --- | --- | --- | --- | --- | --- | --- | --- | --- | --- | --- | --- | --- | --- | --- | --- | --- |
| 261 | 4.4 | **Rede de ar condicionado / Aquecimento / VMC** |  | 63d | 2026-09-09 A | 2026-12-04 |  | 3% | 61.25d | 2026-03-16 | 2026-07-08 | 83d | 27d |  | 168h | 8h | 79,829.91 | 79,829.91 | 2,394.9 |
| 262 | 4.4.1 | **Pré Instalação** |  | 63d | 2026-09-09 A | 2026-12-04 |  | 3% | 61.25d | 2026-03-16 | 2026-07-08 | 83d | 27d |  | 168h | 8h | 0.01 | 0.01 | 0 |
| 263 | 4.4.1.1 | **AVAC - HRG 04** |  | 21d | 2026-09-09 A | 2026-10-07 |  | 5% | 20d | 2026-03-16 | 2026-04-17 | 25d | 69d | RENINSTAL - AVAC | 168h | 8h | 0.01 | 0.01 | 0 |
| 264 | 4.4.1.1.1 | Piso 1 |  | 7d | 2026-09-09 A | 2026-09-17 | 79 | 14% | 6d | 2026-03-16 | 2026-03-24 | 7d | 83d |  |  |  |  |  |  |
| 265 | 4.4.1.1.2 | Piso 2 |  | 7d | 2026-09-21 | 2026-09-29 | 80 |  |  | 2026-04-01 | 2026-04-09 | 7d | 75d |  |  |  |  |  |  |
| 266 | 4.4.1.1.3 | Piso 3 |  | 7d | 2026-09-29 | 2026-10-07 | 81 |  |  | 2026-04-09 | 2026-04-17 | 7d | 69d |  |  |  |  |  |  |
| 267 | 4.4.1.2 | **Montagem de equipamentos exteriores** |  | 18d | 2026-11-11 | 2026-12-04 |  |  |  | 2026-06-15 | 2026-07-08 | 18d | 27d |  |  |  |  |  |  |
| 268 | 4.4.1.2.1 | **HRG 04** |  | 18d | 2026-11-11 | 2026-12-04 |  |  |  | 2026-06-15 | 2026-07-08 | 18d | 27d |  |  |  |  |  |  |
| 269 | 4.4.1.2.1.1 | Piso 1 |  | 5d | 2026-11-11 | 2026-11-17 | 171 |  |  | 2026-06-15 | 2026-06-19 | 5d | 40d |  |  |  |  |  |  |
| 270 | 4.4.1.2.1.2 | Piso 2 |  | 5d | 2026-11-23 | 2026-11-27 | 172 |  |  | 2026-06-25 | 2026-07-01 | 5d | 32d |  |  |  |  |  |  |
| 271 | 4.4.1.2.1.3 | Piso 3 |  | 5d | 2026-11-30 | 2026-12-04 | 173 |  |  | 2026-07-02 | 2026-07-08 | 5d | 27d |  |  |  |  |  |  |
| 272 | 4.5 | **Rede de incêndio** |  | 10d | 2026-07-20 A | 2026-07-31 A |  | 100% |  | 2026-03-20 | 2026-04-02 | 10d |  |  | 80h | 80h | 3,371.58 | 3,371.58 | 3,371.58 |
| 273 | 4.5.1 | SCIE - HRG 04 |  | 10d | 2026-07-20 A | 2026-07-31 A | 12FS+10d | 100% |  | 2026-03-20 | 2026-04-02 | 10d |  | RENINSTAL - ELÉTRICA | 80h | 80h |  |  |  |
| 274 | 4.6 | **Ascensores** |  | 20d | 2026-09-14 | 2026-10-09 |  |  |  | 2026-05-01 | 2026-05-28 | 20d | 67d |  | 160h |  | 17,867.58 | 17,867.58 |  |
| 275 | 4.6.1 | Ascensores - HRG 04 |  | 20d | 2026-09-14 | 2026-10-09 | 12FS+40d |  |  | 2026-05-01 | 2026-05-28 | 20d | 67d | SCHMITT - ELEVADORES; LDA | 160h |  |  |  |  |
| 276 | 4.7 | **Desenfumagem** |  | 15d | 2026-08-03 A | 2026-09-04 A |  | 100% |  | 2026-04-03 | 2026-04-23 | 15d |  | KINGSPAN | 240h | 240h | 910.7 | 910.7 | 910.7 |
| 277 | 4.7.1 | Desenfumagem - HRG 04 |  | 15d | 2026-08-03 A | 2026-09-04 A | 12FS+20d | 100% |  | 2026-04-03 | 2026-04-23 | 15d |  | KINGSPAN | 120h | 120h | 910.7 | 910.7 | 910.7 |
| 278 | 5 | **INFRAESTRUTURAS** |  | 30d | 2026-11-09 | 2026-12-18 |  |  |  | 2026-06-11 | 2026-07-22 | 30d | 17d |  |  |  | 23,063.86 | 23,063.86 |  |
| 279 | 5.1 | Arranjos paisagisticos e ramais |  | 30d | 2026-11-09 | 2026-12-18 | 191 |  |  | 2026-06-11 | 2026-07-22 | 30d | 17d |  |  |  | 23,063.86 | 23,063.86 |  |
| 280 | 6 | Fase de conclusão | inactive | 1d | 2025-10-20 | 2025-10-20 |  |  |  |  |  |  | 303d |  |  |  |  |  |  |
